How a schedule from an exported table changed from version to version. A marks actual dates.

## Version 1 (saved 2026-09-10)

Note of the change: Reconcile the approved post-beta master baseline (#163)

| Task | Start |
| --- | --- |
| Patch the local integration image dependency advisory |  |
| Patch the development test-runner security advisory |  |
| Restore badges and distinguish target architecture from delivery status |  |
| Complete repository, architecture and privacy documentation |  |
| Enforce private-beta resource guardrails | 2026-10-27 |
| Attach bounded telemetry to programmatic support intake | 2027-03-08 |
| Recover accepted payloads through durable storage journals | 2026-10-15 |
| Expose owner and tenant Cost & Capacity controls | 2027-01-09 |
| Enable verified canonical support-email conversations | 2027-01-25 |
| Dispatch transactional outbound intents reliably | 2026-12-29 |
| Normalise provider events into reliable conversation state | 2026-12-11 |
| Expose authorised deterministic self-service actions | 2027-06-08 |
| Report operational performance and quality metrics | 2027-07-06 |
| Review agent interactions through auditable QA workflows | 2027-06-24 |
| Transfer live agentic work safely to human operators | 2027-05-27 |
| Resolve reference-service tickets through bounded autonomous workflows | 2027-06-08 |
| Bind human approvals to specific proposed actions | 2027-05-15 |
| Validate governed actions against an isolated reference API | 2027-04-26 |
| Enforce granular human and agent capabilities | 2027-04-09 |
| Author and publish governed diagnostic workflows visually | 2027-06-24 |
| Expand the operator copilot with translation and runbooks | 2027-05-19 |
| Add bounded triage and conversation summarisation | 2027-05-04 |
| Enrich intake with authorised operational context | 2027-04-22 |
| Preserve conversations across verified channel changes | 2027-02-27 |
| Expose SLA progress and responsible handlers | 2027-02-16 |
| Split and merge tickets without losing context | 2027-02-24 |
| Enable keyboard-first workspace navigation | 2027-02-05 |
| Add typing awareness and private colleague collaboration | 2027-02-11 |
| Add reusable responses and safe operator macros | 2027-02-10 |
| Add a rich conversation composer | 2027-01-29 |
| Package isolated helpdesk Web Components | 2027-01-01 |
| Apply tenant themes through standard CSS variables | 2026-12-24 |
| Rehearse and publish the human-led private beta | 2026-11-13 |
| Enforce resource budgets across active application paths | 2026-11-06 |
| Record attributable ticket and conversation audit events | 2026-10-23 |
| Validate human handling of canonical ticket intake | 2026-11-02 |
| Validate authenticated portal conversations end to end | 2026-10-31 |
| Make API and portal mutations validated and retry-safe | 2026-10-15 |
| Map API and portal intake onto canonical conversation contracts | 2026-10-07 |
| Provision isolated test tenants reproducibly | 2026-09-23 |
| Establish isolated preview and beta deployments | 2026-09-11 |
| Implement tenant-owned Telegram support messaging | 2027-04-01 |
| Implement tenant-owned WhatsApp messaging | 2027-03-19 |
| Implement tenant-owned Microsoft Teams support channels | 2027-03-16 |
| Implement tenant-owned Slack support channels | 2027-01-13 |
| Deliver signed tenant webhook subscriptions reliably | 2027-03-11 |
| Implement authenticated durable webhook ingress | 2026-11-16 |
| Define enforceable cost policies and resource budgets | 2026-09-08 |
| Track delivery of the omnichannel architecture | 2027-04-09 |
| Establish shared headless primitives for standalone Tocyn | 2026-12-03 |
| Evaluate deferred major dependency and Actions upgrades | 2026-11-30 |
| Retire inactive services while preserving regression coverage | 2026-11-26 |
| Validate production cutover and rollback readiness | 2026-12-03 |
| Complete remaining repository launch administration | 2026-12-01 |
| Validate accessibility of core operator and portal workflows | 2026-11-07 |
| Verify reproducible local contributor setup | 2026-09-08 |
| Complete tenant-isolation acceptance coverage | 2026-09-29 |
| Migrate transactional mail to Cloudflare-native delivery | 2027-01-21 |
| Complete FidesLang coverage and optional user controls | 2027-04-13 |
| Establish measurable FidesLang coverage | 2027-04-05 |
| Audit codebase health and test coverage |  |
| Standardise repository formatting and lint conventions | 2026-11-21 |
| Review and remediate codebase security vulnerabilities |  |
| Verify required checks on dependency-only pull requests | 2026-09-16 |
| Define the post-beta operator workspace interaction contract |  |
| Build the persistent progressive operator workspace |  |
| Persist operator drafts, selection and workspace continuity |  |
| Add task-based work queues and snooze/resurface |  |
| Unify global search and scoped inbox filtering |  |
| Add cognitive-accessibility workspace preferences and focus mode |  |

| Task |
| --- |
| Replace transient ticket toasts with durable operator activity |
| Add customer context and contextual support panels |
| Add configurable Table view and safe bulk ticket actions |
| Add explicit waiting reasons and configurable support workflow states |
| Add workload-aware queues and operator capacity controls |
| Define workspace utility actions for call, remote support and external tools |
| Measure operator interaction performance and enforce UI response budgets |
| Validate the redesigned operator workspace for usability and cognitive accessibility |
| Track delivery of the approved helpdesk capability extensions |
| Prove the Cloudflare Realtime support-session architecture |
| Model tenant-scoped realtime support sessions and media permissions |
| Add browser voice, video and screen-sharing support sessions |
| Implement a tenant-owned telephony gateway for inbound and outbound calls |
| Add voicemail, callback, transfer and call-queue operations |
| Record and transcribe support sessions under tenant policy |
| Integrate realtime support artefacts into conversations, QA and reporting |
| Create linked back-office work items without exposing customer conversations |
| Track service problems and incidents across affected conversations |
| Ingest tenant PDF knowledge with lifecycle-safe provenance |
| Bind AI assistance to authorised tenant knowledge scopes |
| Render governed operator applets from declarative schemas |
| Author, validate and publish tenant applets safely |
| Capture tenant-scoped CSAT and CES feedback |
| Expose a live support-operations management dashboard |
| Build bounded tenant-defined operational reports |
| Accept verified Cloudflare Access workforce identity without weakening Tocyn authorisation |
| Establish operational observability and service-level objectives |
| Define deployment residency and jurisdiction boundaries |
| Evaluate AI inference routing, caching and provider fallback |
| Define operational metric contracts for SLA and routing |

## Version 2 (saved 2026-09-10)

Note of the change: Define versioned cost policies and reserved-admission contracts (#165)

Changed:

| Task | Start |
| --- | --- |
| Define the post-beta operator workspace interaction contract | none → 2026-09-11 |
| Build the persistent progressive operator workspace | none → 2026-12-17 |
| Persist operator drafts, selection and workspace continuity | none → 2026-10-02 |
| Add task-based work queues and snooze/resurface | none → 2026-12-04 |
| Unify global search and scoped inbox filtering | none → 2027-01-14 |
| Add cognitive-accessibility workspace preferences and focus mode | none → 2027-01-12 |
| Replace transient ticket toasts with durable operator activity | none → 2027-01-20 |
| Add customer context and contextual support panels | none → 2027-01-22 |
| Add configurable Table view and safe bulk ticket actions | none → 2027-01-28 |
| Add explicit waiting reasons and configurable support workflow states | none → 2026-10-15 |
| Add workload-aware queues and operator capacity controls | none → 2026-12-30 |
| Define workspace utility actions for call, remote support and external tools | none → 2027-02-03 |
| Measure operator interaction performance and enforce UI response budgets | none → 2027-02-05 |
| Validate the redesigned operator workspace for usability and cognitive accessibility | none → 2027-02-11 |
| Track delivery of the approved helpdesk capability extensions | none → 2028-02-08 |
| Prove the Cloudflare Realtime support-session architecture | none → 2027-07-09 |
| Model tenant-scoped realtime support sessions and media permissions | none → 2027-07-23 |
| Add browser voice, video and screen-sharing support sessions | none → 2027-08-13 |
| Implement a tenant-owned telephony gateway for inbound and outbound calls | none → 2027-08-26 |
| Add voicemail, callback, transfer and call-queue operations | none → 2027-09-20 |
| Record and transcribe support sessions under tenant policy | none → 2027-09-07 |
| Integrate realtime support artefacts into conversations, QA and reporting | none → 2028-01-06 |
| Create linked back-office work items without exposing customer conversations | none → 2027-07-20 |
| Track service problems and incidents across affected conversations | none → 2027-08-05 |
| Ingest tenant PDF knowledge with lifecycle-safe provenance | none → 2027-09-28 |
| Bind AI assistance to authorised tenant knowledge scopes | none → 2027-10-15 |
| Render governed operator applets from declarative schemas | none → 2027-10-11 |
| Author, validate and publish tenant applets safely | none → 2027-12-28 |
| Capture tenant-scoped CSAT and CES feedback | none → 2027-11-01 |
| Expose a live support-operations management dashboard | none → 2028-01-19 |
| Build bounded tenant-defined operational reports | none → 2028-01-13 |
| Accept verified Cloudflare Access workforce identity without weakening Tocyn authorisation | none → 2027-11-13 |
| Establish operational observability and service-level objectives | none → 2026-10-28 |
| Define deployment residency and jurisdiction boundaries | none → 2027-02-19 |
| Evaluate AI inference routing, caching and provider fallback | none → 2027-11-30 |
| Define operational metric contracts for SLA and routing | none → 2026-11-14 |
